# caintegrator_project_plan_v3

Schedule from MS Project, 2011-08-01 to 2012-07-04, A marks actual dates.
NIH\NCI

## Calendars

- Standard: Mon-Fri 08:00-12:00, 13:00-17:00; Sat-Sun off. Exceptions (off unless hours are given): 2011-09-05.

## Resources

| Resource |
| --- |
| JP |
| TBH |
| SJ/JP |
| Qut |
| Quy |
| SJ |
| HS |
| Systems |
| MAX |

## Schedule

| ID | WBS | Task | Type | Duration | Start | Finish | Predecessors | Complete | Remaining | Total slack | Free slack | Constraint | Resources | Work | Actual work |
| --- | --- | --- | --- | --- | --- | --- | --- | --- | --- | --- | --- | --- | --- | --- | --- |
| 1 | 1 | **Adhoc Generic Support** |  | 16d | 2011-08-01 | 2011-08-22 |  |  |  | 226d |  |  |  |  |  |
| 2 | 1.1 | TCGA Data Support |  | 2d | 2011-08-01 | 2011-08-02 |  |  |  | 239.75d |  |  |  |  |  |
| 3 | 1.2 | TCGA Data on caIntegrator |  | 4d | 2011-08-17 | 2011-08-22 |  |  |  | 225.75d |  | start no earlier than 2011-08-17 |  |  |  |
| 4 | 1.3 | MATKC Support | milestone | 0d | 2011-08-01 | 2011-08-01 |  |  |  | 241.75d |  |  |  |  |  |
| 5 | 2 | **CaIntegrator Version 1.3.1** |  | 30d? | 2011-08-15 A | 2011-09-26 A |  | 100% |  |  |  |  |  | 120h | 120h |
| 6 | 2.1 | **JIRA CAINT-1011 508 Compliance** |  | 13d | 2011-08-15 A | 2011-08-31 A |  | 100% |  |  |  |  |  | 56h | 56h |
| 7 | 2.1.1 | Common Accenture Profile Dev/QA |  | 1d | 2011-08-15 A | 2011-08-15 A |  | 100% |  |  |  | start no earlier than 2011-08-15 | Quy | 8h | 8h |
| 8 | 2.1.2 | Identify 508 issues to be fixed and create JIRA user story tasks for each on DEV and QA. |  | 3d | 2011-08-22 A | 2011-08-24 A | 7 | 100% |  |  |  |  | JP | 24h | 24h |
| 9 | 2.1.3 | Fix TABLE tag in caBIO search form. |  | 0.5d | 2011-08-29 A | 2011-08-29 A | 8 | 100% |  |  |  |  | JP | 4h | 4h |
| 10 | 2.1.4 | Fix TABLE tag in gene list search form. |  | 0.5d | 2011-08-29 A | 2011-08-29 A | 9 | 100% |  |  |  |  | JP | 4h | 4h |
| 11 | 2.1.5 | Fix ALT tags in caBIO search form |  | 0.5d | 2011-08-30 A | 2011-08-30 A | 10 | 100% |  |  |  |  | JP | 4h | 4h |
| 12 | 2.1.6 | Fix ALT tags in study summary page |  | 0.5d | 2011-08-30 A | 2011-08-30 A | 11 | 100% |  |  |  |  | JP | 4h | 4h |
| 13 | 2.1.7 | Fix TABLE header in registeration page |  | 0.5d | 2011-08-31 A | 2011-08-31 A | 12 | 100% |  |  |  |  | JP | 4h | 4h |
| 14 | 2.1.8 | Fix TABLE in study summary page. |  | 0.5d | 2011-08-31 A | 2011-08-31 A | 13 | 100% |  |  |  |  | JP | 4h | 4h |
| 15 | 2.2 | **Ongoing maintenance and bug fixes** |  | 18d? | 2011-08-31 A | 2011-09-26 A |  | 100% |  |  |  |  |  | 64h | 64h |
| 16 | 2.2.1 | ADF platform issues |  | 2d | 2011-08-31 A | 2011-09-01 A |  | 100% |  |  |  | start no earlier than 2011-08-31 | JP | 16h | 16h |
| 17 | 2.2.2 | ECAT Prep |  | 2d | 2011-09-02 A | 2011-09-06 A | 16 | 100% |  |  |  |  | SJ; JP | 32h | 32h |
| 18 | 2.2.3 | prepare a point release for section 508 compliance. |  | 2d | 2011-09-19 A | 2011-09-20 A |  | 100% |  |  |  | start no earlier than 2011-09-19 | JP | 16h | 16h |
| 19 | 2.2.4 | Bug fix for typo error and new tag (RC2) |  | 1d? | 2011-09-26 A | 2011-09-26 A |  | 100% |  |  |  |  |  |  |  |
| 20 | 3 | QA on RC1 |  | 5d | 2011-09-20 A | 2011-09-26 A | 18 | 100% |  |  |  |  | HS | 40h | 40h |
| 21 | 4 | QA on RC2 |  | 5d | 2011-09-27 | 2011-10-03 | 20 |  |  | 190d | 0d |  | HS | 40h |  |
| 22 | 5 | Release - Stage/QA/Prod/QA |  | 7d | 2011-10-04 | 2011-10-12 | 21 |  |  | 190d |  |  | Systems | 56h |  |
| 23 | 6 | **CaIntegrator Version 1.4** |  | 140d | 2011-08-01 A | 2012-02-13 |  | 7% | 129.8d | 102d |  |  |  | 992h | 72h |
| 24 | 6.1 | Version 1.4 planning/priortization |  | 2d | 2011-08-01 A | 2011-08-02 A |  | 100% |  |  |  |  |  |  |  |

| ID | WBS | Task | Duration | Start | Finish | Predecessors | Complete | Remaining | Total slack | Free slack | Constraint | Resources | Work | Actual work |
| --- | --- | --- | --- | --- | --- | --- | --- | --- | --- | --- | --- | --- | --- | --- |
| 25 | 6.2 | **JIRA CAINT-1015 Tech Stack Upgrade** | 55d | 2011-08-03 A | 2011-10-19 | 24 | 30% | 38.5d | 159d |  |  |  | 240h | 72h |
| 26 | 6.2.1 | Planning | 2d | 2011-08-03 A | 2011-08-04 A |  | 100% |  |  |  |  | JP | 16h | 16h |
| 27 | 6.2.2 | CI to Jenkins | 2d | 2011-09-07 A | 2011-09-08 A | 26, 47 | 100% |  |  |  |  | JP | 16h | 16h |
| 28 | 6.2.3 | ANT 1.8 | 3d | 2011-09-09 A | 2011-09-13 A | 27 | 100% |  |  |  |  | JP | 24h | 24h |
| 29 | 6.2.4 | Support for Version 1.3.1 RC1 | 2d | 2011-09-20 A | 2011-09-21 A | 18 | 100% |  |  |  |  | JP | 16h | 16h |
| 30 | 6.2.5 | JIRA CAINT-1015 Migration from nexus | 5d | 2011-10-06 | 2011-10-12 | 28 |  |  | 164d | 0d |  | MAX | 40h |  |
| 31 | 6.2.6 | JIRA CAINT-1015 Upgrade build for Anthill Pro 3, JBOSS upgrade | 16d | 2011-09-28 | 2011-10-19 | 29, 48 |  |  | 0d |  |  | JP | 128h |  |
| 32 | 6.3 | **JIRA-CAINT-1047 - Resolve Appscan Issues** | 7d | 2011-10-13 | 2011-10-21 |  |  |  | 164d | 0d |  |  | 56h |  |
| 33 | 6.3.1 | Run Appscan | 2d | 2011-10-13 | 2011-10-14 | 30 |  |  | 164d | 0d |  | MAX | 16h |  |
| 34 | 6.3.2 | Address all medium issues | 5d | 2011-10-17 | 2011-10-21 | 33 |  |  | 164d |  |  | MAX | 40h |  |
| 35 | 6.4 | **TRANSCEND Support** | 39d | 2011-09-26 | 2011-11-17 |  |  |  | 164d |  |  |  | 152h |  |
| 36 | 6.4.1 | Refine requirements | 5d | 2011-09-26 | 2011-09-30 |  |  |  | 198d |  | start no earlier than 2011-09-26 |  |  |  |
| 37 | 6.4.2 | JIRA CAINT-998 -Version control (create shell study) | 14d | 2011-10-24 | 2011-11-10 | 32 |  |  | 164d | 0d |  | MAX | 112h |  |
| 38 | 6.4.3 | JIRA CAINT-998 Version control (Archive) | 5d | 2011-11-11 | 2011-11-17 | 37 |  |  | 164d |  |  | MAX | 40h |  |
| 39 | 6.5 | **JIRA-CAINT-966 - Generic Platform Support** | 43d | 2011-10-20 | 2011-12-19 |  |  |  | 0d |  |  |  | 344h |  |
| 40 | 6.5.1 | Create new generic platform model by extending expression platform. | 8d | 2011-10-20 | 2011-10-31 | 31 |  |  | 0d |  |  | JP | 64h |  |
| 41 | 6.5.2 | Modify the generic platform loader to accept MAGE-TAB. | 5d | 2011-11-01 | 2011-11-07 | 40 |  |  | 0d |  |  | JP | 40h |  |
| 42 | 6.5.3 | Modify the study deployment process to load the new platform data from caArray. | 8d | 2011-11-08 | 2011-11-17 | 41 |  |  | 0d |  |  | JP | 64h |  |
| 43 | 6.5.4 | modify front-end analysis tools to show a new title according to platform type. | 3d | 2011-11-18 | 2011-11-22 | 42 |  |  | 0d |  |  | JP | 24h |  |
| 44 | 6.5.5 | Modify the Query interface to allow selection of a generic expression data type. | 14d | 2011-11-23 | 2011-12-12 | 43 |  |  | 0d |  |  | JP | 112h |  |
| 45 | 6.5.6 | Modify front-end for IGV and heatmap to display a selector for choosing a generic expression data type. | 5d | 2011-12-13 | 2011-12-19 | 44 |  |  | 0d |  |  | JP | 40h |  |
| 46 | 6.6 | **Ongoing maintenance and bug fixes** | 19d | 2011-08-31 | 2011-09-27 |  |  |  | 16d |  |  |  | 40h |  |
| 47 | 6.6.1 | ADF platform issues | 2d | 2011-08-31 | 2011-09-01 |  |  |  | 218d |  | start no earlier than 2011-08-31 | JP | 16h |  |
| 48 | 6.6.2 | Data issues with training tier | 3d | 2011-09-23 | 2011-09-27 |  |  |  | 0d |  | start no earlier than 2011-09-23 | JP | 24h |  |
| 49 | 6.7 | QA | 20d | 2011-12-20 | 2012-01-16 | 39 |  |  | 0d |  |  | HS | 160h |  |
| 50 | 6.8 | Documentation | 10d | 2012-01-17 | 2012-01-30 | 49 |  |  | 102d | 0d |  |  |  |  |
| 51 | 6.9 | Appscan/Stage/Prod release | 10d | 2012-01-31 | 2012-02-13 | 50 |  |  | 102d |  |  |  |  |  |

| ID | WBS | Task | Duration | Start | Finish | Predecessors | Total slack | Free slack | Resources | Work |
| --- | --- | --- | --- | --- | --- | --- | --- | --- | --- | --- |
| 52 | 7 | **CaIntegrator Version 1.5** | 242d? | 2011-08-01 | 2012-07-04 |  | 0d |  |  | 1280h |
| 53 | 7.1 | Version 1.5 planning/priortization | 2d | 2012-01-17 | 2012-01-18 | 49 | 0d |  |  |  |
| 54 | 7.2 | **TRANSCEND Support** | 202d? | 2011-08-01 | 2012-05-09 |  | 40d |  |  | 1120h |
| 55 | 7.2.1 | JIRA CAINT-998 - TRANSCEND Permissions Support | 40d | 2012-01-19 | 2012-03-14 | 53 | 0d |  | JP | 320h |
| 56 | 7.2.2 | JIRA CAINT-998 Automatic Refresh | 40d | 2012-01-19 | 2012-03-14 | 53 | 60d | 0d | TBH | 320h |
| 57 | 7.2.3 | JIRA CAINT-998 Single Sign-on | 40d | 2012-03-15 | 2012-05-09 | 55 | 0d |  | TBH | 320h |
| 58 | 7.2.4 | JIRA CAINT-49 Integrate with private studies in NBIA | 20d | 2012-03-15 | 2012-04-11 | 56 | 60d |  | JP | 160h |
| 59 | 7.2.5 | JIRA CAINT-1045 Performance Requirements | 1d? | 2011-08-01 | 2011-08-01 |  | 241d |  |  |  |
| 60 | 7.3 | JIRA CAINT-1041 - Support NCI Funded Studies Deployment | 20d | 2012-05-10 | 2012-06-06 | 57 | 0d |  | TBH | 160h |
| 61 | 7.4 | QA | 20d | 2012-06-07 | 2012-07-04 | 60 | 0d |  |  |  |
| 62 | 7.5 | Documentation | 10d | 2012-06-07 | 2012-06-20 | 60 | 0d |  |  |  |
| 63 | 7.6 | Appscan/Stage/Prod release | 10d | 2012-06-21 | 2012-07-04 | 62 | 0d |  |  |  |
